# Programacion_Proyecto

How a schedule from MS Project changed from version to version. A marks actual dates.

## Version 1 (data date 2022-10-05, saved 2022-10-07)

Note of the change: final

| ID | WBS | Task | Duration | Start | Finish | Predecessors | Complete | Total float |
| --- | --- | --- | --- | --- | --- | --- | --- | --- |
| 1 | 1 | **Proyecto_Data_Flights** | 21d | 2022-10-03 A | 2022-10-26 |  | 26% | 0d |
| 2 |  | Inicio | 0d | 2022-10-03 | 2022-10-03 |  |  | 0d |
| 3 | 1.2 | **Semana1** | 6d | 2022-10-03 A | 2022-10-08 | 2 | 72% | 0d |
| 4 |  | Organización del grupo | 1d | 2022-10-03 A | 2022-10-03 A |  | 100% |  |
| 5 |  | Estructuración del calendario | 1d | 2022-10-03 A | 2022-10-03 A |  | 100% |  |
| 6 |  | Revision de la data | 6h | 2022-10-04 A | 2022-10-04 A | 4, 5 | 100% |  |
| 7 |  | Busqueda de mas Data | 6h | 2022-10-04 A | 2022-10-04 | 6 | 75% | 4d |
| 8 |  | Investigacion de las herramientas tecnologicas | 6h | 2022-10-04 A | 2022-10-04 A | 7SS | 100% |  |
| 9 |  | Definicion de KPI's y Objetivos | 1d | 2022-10-05 A | 2022-10-05 A | 8 | 100% |  |
| 10 |  | Definicion de periodo temporal y bases de datos | 1d | 2022-10-05 A | 2022-10-05 | 8 | 75% | 3d |
| 11 |  | Elaboración de Proyecto tentativo | 1d | 2022-10-06 A | 2022-10-06 A | 9, 10 | 100% |  |
| 12 |  | Presentación de Proyecto tentativo | 1d | 2022-10-07 | 2022-10-07 | 11 |  | 0d |
| 13 |  | Levantamiento de Observaciones | 1d | 2022-10-08 | 2022-10-08 | 12 |  | 0d |
| 14 | 1.3 | **Semana2** | 6d | 2022-10-10 | 2022-10-15 | 3 |  |  |
| 15 |  | Investigación de las herramientas para la arquitectura | 1d | 2022-10-10 | 2022-10-10 |  |  | 0d |
| 16 |  | Diseño de la arquitectura | 1d | 2022-10-11 | 2022-10-11 | 3, 15 |  | 0d |
| 17 |  | Elaboracion del entorno de extracción de datos | 1d | 2022-10-12 | 2022-10-12 | 16 |  | 0d |
| 18 |  | Elaboracion del entorno de transformación de datos | 1d | 2022-10-13 | 2022-10-13 | 17 |  | 0d |
| 19 |  | Elaboracion del entorno de carga de datos | 1d | 2022-10-14 | 2022-10-14 | 18 |  | 0d |
| 20 |  | Levantamiento de Observaciones | 1d | 2022-10-15 | 2022-10-15 | 19 |  | 0d |
| 21 | 1.4 | **Semana3** | 6d | 2022-10-17 | 2022-10-22 | 14 |  |  |
| 22 |  | Carga del DW en software de visualizacion | 1d | 2022-10-17 | 2022-10-17 | 14 |  | 0d |
| 23 |  | Revision de la data en Power Query | 1d | 2022-10-18 | 2022-10-18 | 22 |  | 0d |
| 24 |  | Implementación de visualizacion de datos | 1d | 2022-10-19 | 2022-10-19 | 23 |  | 0d |
| 25 |  | Diseño del Dashboard | 1d | 2022-10-20 | 2022-10-20 | 24 |  | 0d |
| 26 |  | Complementación de Dashboard | 1d | 2022-10-21 | 2022-10-21 | 25 |  | 0d |
| 27 |  | Levantamiento de Observaciones | 1d? | 2022-10-22 | 2022-10-22 | 26 |  | 0d |
| 28 | 1.5 | **Semana4** | 3d | 2022-10-24 | 2022-10-26 | 21 |  |  |
| 29 |  | Revision del funcionamiento de l proceso | 1d | 2022-10-24 | 2022-10-24 | 21 |  | 0d |
| 30 |  | Verificacion del proceso completo | 1d | 2022-10-25 | 2022-10-25 | 29 |  | 0d |
| 31 |  | Presentación del Proyecto | 1d | 2022-10-26 | 2022-10-26 | 30 |  | 0d |

## Version 2 (data date 2022-10-05, saved 2022-10-27)

Note of the change: final

Last finish 2022-10-26 → 2022-10-28 (+2d). Complete tasks 6 → 24.

Added:

| ID | Task | Duration | Start | Finish | Predecessors |
| --- | --- | --- | --- | --- | --- |
| 32 | Final | 0d | 2022-10-26 | 2022-10-26 | 31 |

Changed:

| ID | Task | Start | Finish | Duration | Complete | Total float |
| --- | --- | --- | --- | --- | --- | --- |
| 1 | **Proyecto_Data_Flights** |  | 2022-10-26 → 2022-10-28 (+2d) | 21d → 23d | 26% → 96% |  |
| 3 | **Semana1** |  | 2022-10-08 A |  | 72% → 100% | 0d → none |
| 7 | Busqueda de mas Data |  | 2022-10-04 A |  | 75% → 100% | 4d → none |
| 10 | Definicion de periodo temporal y bases de datos |  | 2022-10-05 A |  | 75% → 100% | 3d → none |
| 12 | Presentación de Proyecto tentativo | 2022-10-07 A | 2022-10-07 A |  | 0% → 100% | 0d → none |
| 13 | Levantamiento de Observaciones | 2022-10-08 A | 2022-10-08 A |  | 0% → 100% | 0d → none |
| 14 | **Semana2** | 2022-10-10 A | 2022-10-15 A |  | 0% → 100% |  |
| 15 | Investigación de las herramientas para la arquitectura | 2022-10-10 A | 2022-10-10 A |  | 0% → 100% | 0d → none |
| 16 | Diseño de la arquitectura | 2022-10-11 A | 2022-10-11 A |  | 0% → 100% | 0d → none |
| 17 | Elaboracion del entorno de extracción de datos | 2022-10-12 A | 2022-10-12 A |  | 0% → 100% | 0d → none |
| 18 | Elaboracion del entorno de transformación de datos | 2022-10-13 A | 2022-10-13 A |  | 0% → 100% | 0d → none |
| 19 | Elaboracion del entorno de carga de datos | 2022-10-14 A | 2022-10-14 A |  | 0% → 100% | 0d → none |
| 20 | Levantamiento de Observaciones | 2022-10-15 A | 2022-10-15 A |  | 0% → 100% | 0d → none |
| 21 | **Semana3** | 2022-10-17 A | 2022-10-22 A |  | 0% → 100% |  |
| 22 | Carga del DW en software de visualizacion | 2022-10-17 A | 2022-10-17 A |  | 0% → 100% | 0d → none |
| 23 | Revision de la data en Power Query | 2022-10-18 A | 2022-10-18 A |  | 0% → 100% | 0d → none |
| 24 | Implementación de visualizacion de datos | 2022-10-19 A | 2022-10-19 A |  | 0% → 100% | 0d → none |
| 25 | Diseño del Dashboard | 2022-10-20 A | 2022-10-20 A |  | 0% → 100% | 0d → none |
| 26 | Complementación de Dashboard | 2022-10-21 A | 2022-10-21 A |  | 0% → 100% | 0d → none |
| 27 | Levantamiento de Observaciones | 2022-10-22 A | 2022-10-22 A | 1d? → 1d | 0% → 100% | 0d → none |
| 28 | **Semana4** | 2022-10-24 A | 2022-10-26 → 2022-10-28 (+2d) | 3d → 5d | 0% → 67% |  |
| 29 | Revision del funcionamiento de l proceso | 2022-10-24 A | 2022-10-24 A |  | 0% → 100% | 0d → none |
| 30 | Verificacion del proceso completo | 2022-10-25 A | 2022-10-25 A |  | 0% → 100% | 0d → none |
